How a schedule from Planner changed from version to version. A marks actual dates.

## Version 1 (saved 2010-06-08)

Note of the change: planning documentation

| ID | WBS | Task | Start | Finish | Predecessors |
| --- | --- | --- | --- | --- | --- |
| 1 | 1 | **mygolfcard** | 2010-06-07 | 2010-07-21 |  |
| 2 |  | Planificación | 2010-06-07 | 2010-06-07 |  |
| 3 | 1.2 | **Modelo de Datos** | 2010-06-08 | 2010-06-09 | 2 |
| 4 |  | Log Histórico | 2010-06-08 | 2010-06-09 |  |
| 5 |  | Perfiles - Permisos | 2010-06-08 | 2010-06-09 |  |
| 6 |  | Privacidad | 2010-06-08 | 2010-06-09 |  |
| 7 | 1.3 | **Alcance versión I** | 2010-06-09 | 2010-07-21 | 3 |
| 8 |  | Log operaciones | 2010-06-09 | 2010-06-10 |  |
| 9 | 1.3.2 | **Seguridad v.1.0** | 2010-06-10 | 2010-06-14 | 8 |
| 10 |  | Implementación Permisos | 2010-06-10 | 2010-06-14 |  |
| 11 |  | Implementación privacidad (público vs privado) | 2010-06-10 | 2010-06-14 |  |
| 12 | 1.3.3 | **Courses** | 2010-06-14 | 2010-06-18 | 9 |
| 13 |  | Alta sólo ADMIN | 2010-06-14 | 2010-06-15 |  |
| 14 |  | Galería de Imágenes | 2010-06-15 | 2010-06-16 | 13 |
| 15 |  | Geoposicionaminento fijo | 2010-06-16 | 2010-06-17 | 14 |
| 16 |  | Campos de Madrid | 2010-06-17 | 2010-06-18 | 15 |
| 17 | 1.3.4 | **Home** | 2010-06-18 | 2010-06-23 | 12 |
| 18 |  | Revisión de textos | 2010-06-18 | 2010-06-21 |  |
| 19 |  | Alta nuevos usuarios | 2010-06-21 | 2010-06-23 | 18 |
| 20 | 1.3.5 | **Inicio** | 2010-06-23 | 2010-06-28 | 17 |
| 21 |  | Estilos | 2010-06-23 | 2010-06-24 |  |
| 22 |  | Revisión textos de ayuda | 2010-06-24 | 2010-06-25 | 21 |
| 23 |  | Definir opciones finales | 2010-06-25 | 2010-06-28 | 22 |
| 24 |  | Menú | 2010-06-28 | 2010-06-29 | 20 |
| 25 | 1.3.7 | **Matches** | 2010-06-29 | 2010-07-13 | 24 |
| 26 |  | Revisar estilos | 2010-06-29 | 2010-07-07 |  |
| 27 |  | Alta partidos | 2010-07-07 | 2010-07-09 | 26 |
| 28 |  | Privacidad en visualización | 2010-07-09 | 2010-07-13 | 27 |
| 29 | 1.3.8 | **Datos Personales** | 2010-07-13 | 2010-07-15 | 25 |
| 30 |  | Modificación Datos | 2010-07-13 | 2010-07-14 |  |
| 31 |  | Recuperación password | 2010-07-14 | 2010-07-15 | 30 |
| 32 | 1.3.9 | **Stats** | 2010-07-15 | 2010-07-21 | 29 |
| 33 |  | Definir 2-3 básicas | 2010-07-15 | 2010-07-20 |  |
| 34 |  | Estilos | 2010-07-20 | 2010-07-21 | 33 |

## Version 2 (saved 2010-06-08)

Note of the change: audit trail

Last finish stays 2010-07-21. Complete tasks 0 → 1.

Changed:

| ID | Task | Complete |
| --- | --- | --- |
| 4 | Log Histórico | 0% → 100% |

## Version 3 (saved 2010-06-09)

Note of the change: profiles & privacity

Last finish stays 2010-07-21. Complete tasks 1 → 7.

Changed:

| ID | Task | Complete |
| --- | --- | --- |
| 2 | Planificación | 0% → 100% |
| 5 | Perfiles - Permisos | 0% → 100% |
| 6 | Privacidad | 0% → 100% |
| 8 | Log operaciones | 0% → 100% |
| 10 | Implementación Permisos | 0% → 88% |
| 11 | Implementación privacidad (público vs privado) | 0% → 100% |
| 13 | Alta sólo ADMIN | 0% → 100% |

## Version 4 (saved 2010-06-10)

Note of the change: image gallery

Last finish 2010-07-21 → 2010-07-26 (+5d). Complete tasks 7 → 8.

Added:

| ID | Task | Start | Finish | Predecessors |
| --- | --- | --- | --- | --- |
| 17 | **Revisión CRUD Courses** | 2010-06-18 | 2010-06-22 | 16 |
| 18 | Revisión de estilo - FF/IE/OP | 2010-06-18 | 2010-06-22 |  |
| 19 | SHOW - enlaces/botons | 2010-06-18 | 2010-06-22 |  |
| 20 | INDEX - vista por defecto | 2010-06-18 | 2010-06-22 |  |
| 39 | **Revisión final** | 2010-07-23 | 2010-07-26 | 36 |
| 40 | Revisión CRUD Matches | 2010-07-23 | 2010-07-26 |  |
| 41 | Revisión modelo de datos | 2010-07-23 | 2010-07-26 |  |
| 42 | Revisión formularios (obligatorios) | 2010-07-23 | 2010-07-26 |  |
| 43 | Revisión presentación tarjeta | 2010-07-23 | 2010-07-26 |  |
| 44 | Revisión Estadísticas | 2010-07-23 | 2010-07-26 |  |

Changed:

| ID | Task | Start | Finish | Complete |
| --- | --- | --- | --- | --- |
| 1 | **mygolfcard** |  | 2010-07-21 → 2010-07-26 (+5d) |  |
| 3 | **Modelo de Datos** |  |  | 0% → 100% |
| 7 | **Alcance versión I** |  | 2010-07-21 → 2010-07-26 (+5d) |  |
| 10 | Implementación Permisos |  |  | 88% → 90% |
| 12 | **Courses** |  | 2010-06-18 → 2010-06-22 (+4d) |  |
| 14 | Galería de Imágenes |  |  | 0% → 100% |
| 21 | **Home** | 2010-06-18 → 2010-06-22 (+4d) | 2010-06-23 → 2010-06-25 (+2d) |  |
| 22 | Revisión de textos | 2010-06-18 → 2010-06-22 (+4d) | 2010-06-21 → 2010-06-23 (+2d) |  |
| 23 | Alta nuevos usuarios | 2010-06-21 → 2010-06-23 (+2d) | 2010-06-23 → 2010-06-25 (+2d) |  |
| 24 | **Inicio** | 2010-06-23 → 2010-06-25 (+2d) | 2010-06-28 → 2010-07-07 (+9d) |  |
| 25 | Estilos | 2010-06-23 → 2010-06-25 (+2d) | 2010-06-24 → 2010-06-28 (+4d) |  |
| 26 | Revisión textos de ayuda | 2010-06-24 → 2010-06-28 (+4d) | 2010-06-25 → 2010-06-29 (+4d) |  |
| 27 | Definir opciones finales | 2010-06-25 → 2010-06-29 (+4d) | 2010-06-28 → 2010-07-07 (+9d) |  |
| 28 | Menú | 2010-06-28 → 2010-07-07 (+9d) | 2010-06-29 → 2010-07-08 (+9d) |  |
| 29 | **Matches** | 2010-06-29 → 2010-07-08 (+9d) | 2010-07-13 → 2010-07-15 (+2d) |  |
| 30 | Revisar estilos | 2010-06-29 → 2010-07-08 (+9d) | 2010-07-07 → 2010-07-09 (+2d) |  |
| 31 | Alta partidos | 2010-07-07 → 2010-07-09 (+2d) | 2010-07-09 → 2010-07-13 (+4d) |  |
| 32 | Privacidad en visualización | 2010-07-09 → 2010-07-13 (+4d) | 2010-07-13 → 2010-07-15 (+2d) |  |
| 33 | **Datos Personales** | 2010-07-13 → 2010-07-15 (+2d) | 2010-07-15 → 2010-07-19 (+4d) |  |
| 34 | Modificación Datos | 2010-07-13 → 2010-07-15 (+2d) | 2010-07-14 → 2010-07-16 (+2d) |  |
| 35 | Recuperación password | 2010-07-14 → 2010-07-16 (+2d) | 2010-07-15 → 2010-07-19 (+4d) |  |
| 36 | **Stats** | 2010-07-15 → 2010-07-19 (+4d) | 2010-07-21 → 2010-07-23 (+2d) |  |
| 37 | Definir 2-3 básicas | 2010-07-15 → 2010-07-19 (+4d) | 2010-07-20 → 2010-07-22 (+2d) |  |
| 38 | Estilos | 2010-07-20 → 2010-07-22 (+2d) | 2010-07-21 → 2010-07-23 (+2d) |  |

## Version 5 (saved 2010-06-16)

Note of the change: restyling courses forms

Last finish 2010-07-26 → 2010-07-27 (+1d). Complete tasks 8 → 9.

Added:

| ID | Task | Start | Finish | Predecessors |
| --- | --- | --- | --- | --- |
| 21 | **INDEX** | 2010-06-22 | 2010-06-23 | 20 |
| 22 | Vista por defecto | 2010-06-22 | 2010-06-23 |  |
| 23 | Revisar estilos - FF/IE/OP | 2010-06-22 | 2010-06-23 |  |

Changed:

| ID | Task | Start | Finish | Complete | Predecessors | Other |
| --- | --- | --- | --- | --- | --- | --- |
| 1 | **mygolfcard** |  | 2010-07-26 → 2010-07-27 (+1d) |  |  |  |
| 7 | **Alcance versión I** |  | 2010-07-26 → 2010-07-27 (+1d) |  |  |  |
| 12 | **Courses** |  | 2010-06-22 → 2010-06-23 (+1d) |  |  |  |
| 15 | Geoposicionaminento fijo |  |  | 0% → 100% |  |  |
| 17 | **Revisión CRUD Courses** |  | 2010-06-22 → 2010-06-23 (+1d) |  |  |  |
| 18 | **Revisión de estilo - FF/IE/OP** |  | 2010-06-22 → 2010-06-23 (+1d) |  |  |  |
| 19 | NEW - EDIT |  | 2010-06-22 → 2010-06-21 (-1d) |  |  | was named SHOW - enlaces/botons |
| 20 | SHOW | 2010-06-18 → 2010-06-21 (+3d) |  |  | none → 19 | was named INDEX - vista por defecto |
| 24 | **Home** | 2010-06-22 → 2010-06-23 (+1d) | 2010-06-25 → 2010-06-28 (+3d) |  |  |  |
| 25 | Revisión de textos | 2010-06-22 → 2010-06-23 (+1d) | 2010-06-23 → 2010-06-24 (+1d) |  |  |  |
| 26 | Alta nuevos usuarios | 2010-06-23 → 2010-06-24 (+1d) | 2010-06-25 → 2010-06-28 (+3d) |  |  |  |
| 27 | **Inicio** | 2010-06-25 → 2010-06-28 (+3d) | 2010-07-07 → 2010-07-08 (+1d) |  |  |  |
| 28 | Estilos | 2010-06-25 → 2010-06-28 (+3d) | 2010-06-28 → 2010-06-29 (+1d) |  |  |  |
| 29 | Revisión textos de ayuda | 2010-06-28 → 2010-06-29 (+1d) | 2010-06-29 → 2010-07-07 (+8d) |  |  |  |
| 30 | Definir opciones finales | 2010-06-29 → 2010-07-07 (+8d) | 2010-07-07 → 2010-07-08 (+1d) |  |  |  |
| 31 | Menú | 2010-07-07 → 2010-07-08 (+1d) | 2010-07-08 → 2010-07-09 (+1d) |  |  |  |
| 32 | **Matches** | 2010-07-08 → 2010-07-09 (+1d) | 2010-07-15 → 2010-07-16 (+1d) |  |  |  |
| 33 | Revisar estilos | 2010-07-08 → 2010-07-09 (+1d) | 2010-07-09 → 2010-07-12 (+3d) |  |  |  |
| 34 | Alta partidos | 2010-07-09 → 2010-07-12 (+3d) | 2010-07-13 → 2010-07-14 (+1d) |  |  |  |
| 35 | Privacidad en visualización | 2010-07-13 → 2010-07-14 (+1d) | 2010-07-15 → 2010-07-16 (+1d) |  |  |  |
| 36 | **Datos Personales** | 2010-07-15 → 2010-07-16 (+1d) | 2010-07-19 → 2010-07-20 (+1d) |  |  |  |
| 37 | Modificación Datos | 2010-07-15 → 2010-07-16 (+1d) | 2010-07-16 → 2010-07-19 (+3d) |  |  |  |
| 38 | Recuperación password | 2010-07-16 → 2010-07-19 (+3d) | 2010-07-19 → 2010-07-20 (+1d) |  |  |  |
| 39 | **Stats** | 2010-07-19 → 2010-07-20 (+1d) | 2010-07-23 → 2010-07-26 (+3d) |  |  |  |
| 40 | Definir 2-3 básicas | 2010-07-19 → 2010-07-20 (+1d) | 2010-07-22 → 2010-07-23 (+1d) |  |  |  |
| 41 | Estilos | 2010-07-22 → 2010-07-23 (+1d) | 2010-07-23 → 2010-07-26 (+3d) |  |  |  |
| 42 | **Revisión final** | 2010-07-23 → 2010-07-26 (+3d) | 2010-07-26 → 2010-07-27 (+1d) |  |  |  |
| 43 | Revisión CRUD Matches | 2010-07-23 → 2010-07-26 (+3d) | 2010-07-26 → 2010-07-27 (+1d) |  |  |  |
| 44 | Revisión modelo de datos | 2010-07-23 → 2010-07-26 (+3d) | 2010-07-26 → 2010-07-27 (+1d) |  |  |  |
| 45 | Revisión formularios (obligatorios) | 2010-07-23 → 2010-07-26 (+3d) | 2010-07-26 → 2010-07-27 (+1d) |  |  |  |
| 46 | Revisión presentación tarjeta | 2010-07-23 → 2010-07-26 (+3d) | 2010-07-26 → 2010-07-27 (+1d) |  |  |  |
| 47 | Revisión Estadísticas | 2010-07-23 → 2010-07-26 (+3d) | 2010-07-26 → 2010-07-27 (+1d) |  |  |  |

## Version 6 (saved 2010-06-17)

Note of the change: finish restytling course templates

Last finish stays 2010-07-27. Complete tasks 9 → 13.

Changed:

| ID | Task | Start | Finish | Complete | Predecessors |
| --- | --- | --- | --- | --- | --- |
| 19 | NEW - EDIT |  |  | 0% → 100% |  |
| 20 | SHOW |  |  | 0% → 100% |  |
| 22 | Vista por defecto |  |  | 0% → 100% |  |
| 23 | Revisar estilos - FF/IE/OP |  |  | 0% → 100% |  |
| 24 | **Matches** | 2010-07-09 → 2010-06-23 (-16d) | 2010-07-16 → 2010-07-07 (-9d) |  | 35 → 12 |
| 25 | Revisar estilos | 2010-07-09 → 2010-06-23 (-16d) | 2010-07-12 → 2010-06-24 (-18d) |  |  |
| 26 | Alta partidos | 2010-07-12 → 2010-06-24 (-18d) | 2010-07-14 → 2010-06-28 (-16d) |  |  |
| 27 | Privacidad en visualización | 2010-07-14 → 2010-06-28 (-16d) | 2010-07-16 → 2010-07-07 (-9d) |  |  |
| 28 | **Home** | 2010-06-23 → 2010-07-07 (+14d) | 2010-06-28 → 2010-07-12 (+14d) |  | 12 → 24 |
| 29 | Revisión de textos | 2010-06-23 → 2010-07-07 (+14d) | 2010-06-24 → 2010-07-08 (+14d) |  |  |
| 30 | Alta nuevos usuarios | 2010-06-24 → 2010-07-08 (+14d) | 2010-06-28 → 2010-07-12 (+14d) |  |  |
| 31 | **Inicio** | 2010-06-28 → 2010-07-12 (+14d) | 2010-07-08 → 2010-07-15 (+7d) |  |  |
| 32 | Estilos | 2010-06-28 → 2010-07-12 (+14d) | 2010-06-29 → 2010-07-13 (+14d) |  |  |
| 33 | Revisión textos de ayuda | 2010-06-29 → 2010-07-13 (+14d) | 2010-07-07 → 2010-07-14 (+7d) |  |  |
| 34 | Definir opciones finales | 2010-07-07 → 2010-07-14 (+7d) | 2010-07-08 → 2010-07-15 (+7d) |  |  |
| 35 | Menú | 2010-07-08 → 2010-07-15 (+7d) | 2010-07-09 → 2010-07-16 (+7d) |  |  |
| 36 | **Datos Personales** |  |  |  | 24 → 35 |

## Version 7 (saved 2010-06-24)

Note of the change: checking matches forms

Last finish 2010-07-27 → 2010-08-02 (+6d). Complete tasks 13 → 14.

Added:

| ID | Task | Start | Finish | Predecessors |
| --- | --- | --- | --- | --- |
| 27 | Alta Tarjeta | 2010-06-28 | 2010-06-29 | 26 |

Changed:

| ID | Task | Start | Finish | Complete | Predecessors |
| --- | --- | --- | --- | --- | --- |
| 1 | **mygolfcard** |  | 2010-07-27 → 2010-08-02 (+6d) |  |  |
| 7 | **Alcance versión I** |  | 2010-07-27 → 2010-08-02 (+6d) |  |  |
| 24 | **Matches** |  | 2010-07-07 → 2010-07-08 (+1d) |  |  |
| 25 | Revisar estilos |  |  | 0% → 100% |  |
| 28 | Privacidad en visualización | 2010-06-28 → 2010-06-29 (+1d) | 2010-07-07 → 2010-07-08 (+1d) |  | 26 → 27, 26 |
| 29 | **Home** | 2010-07-07 → 2010-07-08 (+1d) | 2010-07-12 → 2010-07-13 (+1d) |  |  |
| 30 | Revisión de textos | 2010-07-07 → 2010-07-08 (+1d) | 2010-07-08 → 2010-07-09 (+1d) |  |  |
| 31 | Alta nuevos usuarios | 2010-07-08 → 2010-07-09 (+1d) | 2010-07-12 → 2010-07-13 (+1d) |  |  |
| 32 | **Inicio** | 2010-07-12 → 2010-07-13 (+1d) | 2010-07-15 → 2010-07-16 (+1d) |  |  |
| 33 | Estilos | 2010-07-12 → 2010-07-13 (+1d) | 2010-07-13 → 2010-07-14 (+1d) |  |  |
| 34 | Revisión textos de ayuda | 2010-07-13 → 2010-07-14 (+1d) | 2010-07-14 → 2010-07-15 (+1d) |  |  |
| 35 | Definir opciones finales | 2010-07-14 → 2010-07-15 (+1d) | 2010-07-15 → 2010-07-16 (+1d) |  |  |
| 36 | Menú | 2010-07-15 → 2010-07-16 (+1d) | 2010-07-16 → 2010-07-19 (+3d) |  |  |
| 37 | **Datos Personales** | 2010-07-16 → 2010-07-19 (+3d) | 2010-07-20 → 2010-07-21 (+1d) |  |  |
| 38 | Modificación Datos | 2010-07-16 → 2010-07-19 (+3d) | 2010-07-19 → 2010-07-20 (+1d) |  |  |
| 39 | Recuperación password | 2010-07-19 → 2010-07-20 (+1d) | 2010-07-20 → 2010-07-21 (+1d) |  |  |
| 40 | **Stats** | 2010-07-20 → 2010-07-21 (+1d) | 2010-07-26 → 2010-07-28 (+2d) |  |  |
| 41 | Definir 2-3 básicas | 2010-07-20 → 2010-07-21 (+1d) |  |  |  |
| 42 | Estilos |  | 2010-07-26 → 2010-07-28 (+2d) |  |  |
| 43 | **Revisión final** | 2010-07-26 → 2010-07-28 (+2d) | 2010-07-27 → 2010-08-02 (+6d) |  |  |
| 44 | Revisión CRUD Matches | 2010-07-26 → 2010-07-28 (+2d) | 2010-07-27 → 2010-08-02 (+6d) |  |  |
| 45 | Revisión modelo de datos | 2010-07-26 → 2010-07-28 (+2d) | 2010-07-27 → 2010-08-02 (+6d) |  |  |
| 46 | Revisión formularios (obligatorios) | 2010-07-26 → 2010-07-28 (+2d) | 2010-07-27 → 2010-08-02 (+6d) |  |  |
| 47 | Revisión presentación tarjeta | 2010-07-26 → 2010-07-28 (+2d) | 2010-07-27 → 2010-08-02 (+6d) |  |  |
| 48 | Revisión Estadísticas | 2010-07-26 → 2010-07-28 (+2d) | 2010-07-27 → 2010-08-02 (+6d) |  |  |

## Version 8 (saved 2010-07-14)

Note of the change: new matches - testing

Last finish stays 2010-08-02. Complete tasks 14 → 16.

Changed:

| ID | Task | Complete |
| --- | --- | --- |
| 26 | Alta partidos | 0% → 100% |
| 27 | Alta Tarjeta | 0% → 100% |

## Version 9 (saved 2010-07-16)

Note of the change: users

Last finish 2010-08-02 → 2010-08-04 (+2d).

Added:

| ID | Task | Start | Finish | Predecessors |
| --- | --- | --- | --- | --- |
| 40 | Cambio Password | 2010-07-21 | 2010-07-22 | 39 |
| 41 | Amigos | 2010-07-22 | 2010-07-23 | 40 |

Changed:

| ID | Task | Start | Finish |
| --- | --- | --- | --- |
| 1 | **mygolfcard** |  | 2010-08-02 → 2010-08-04 (+2d) |
| 7 | **Alcance versión I** |  | 2010-08-02 → 2010-08-04 (+2d) |
| 37 | **Datos Personales** |  | 2010-07-21 → 2010-07-23 (+2d) |
| 42 | **Stats** | 2010-07-21 → 2010-07-23 (+2d) | 2010-07-28 → 2010-07-30 (+2d) |
| 43 | Definir 2-3 básicas | 2010-07-21 → 2010-07-23 (+2d) | 2010-07-23 → 2010-07-27 (+4d) |
| 44 | Estilos | 2010-07-23 → 2010-07-27 (+4d) | 2010-07-28 → 2010-07-30 (+2d) |
| 45 | **Revisión final** | 2010-07-28 → 2010-07-30 (+2d) | 2010-08-02 → 2010-08-04 (+2d) |
| 46 | Revisión CRUD Matches | 2010-07-28 → 2010-07-30 (+2d) | 2010-08-02 → 2010-08-04 (+2d) |
| 47 | Revisión modelo de datos | 2010-07-28 → 2010-07-30 (+2d) | 2010-08-02 → 2010-08-04 (+2d) |
| 48 | Revisión formularios (obligatorios) | 2010-07-28 → 2010-07-30 (+2d) | 2010-08-02 → 2010-08-04 (+2d) |
| 49 | Revisión presentación tarjeta | 2010-07-28 → 2010-07-30 (+2d) | 2010-08-02 → 2010-08-04 (+2d) |
| 50 | Revisión Estadísticas | 2010-07-28 → 2010-07-30 (+2d) | 2010-08-02 → 2010-08-04 (+2d) |

## Version 10 (saved 2010-07-25)

Note of the change: help microsite

Last finish 2010-08-04 → 2010-11-04 (+92d). Complete tasks 16 → 23.

Added:

| ID | Task | Start | Finish | Predecessors |
| --- | --- | --- | --- | --- |
| 29 | Trasladar el handicap del usuario al partido | 2010-07-08 | 2010-07-09 | 28 |
| 52 | Revisión LAYOUT FF/OP/IE/CHR | 2010-08-18 | 2010-08-23 | 51 |
| 53 | Courses - "Switch view" | 2010-08-23 | 2010-08-24 | 52 |
| 54 | **Pruebas** | 2010-08-24 | 2010-09-21 | 7 |
| 55 | Unitarias | 2010-08-24 | 2010-09-07 |  |
| 56 | Funcionales | 2010-09-07 | 2010-09-21 | 55 |
| 57 | **Alcance versión II** | 2010-09-21 | 2010-11-04 | 54 |
| 58 | **Refactorización** | 2010-09-21 | 2010-09-27 |  |
| 59 | Revisión de código | 2010-09-21 | 2010-09-23 |  |
| 60 | Eliminación código sobrante | 2010-09-23 | 2010-09-27 | 59 |
| 61 | **Google Maps** | 2010-09-27 | 2010-10-04 | 58 |
| 62 | Posicionamiento automático | 2010-09-27 | 2010-09-29 |  |
| 63 | "Como llegar" | 2010-09-29 | 2010-10-04 | 62 |
| 64 | **Estadísticas** | 2010-10-04 | 2010-10-11 | 61 |
| 65 | Estadísticas Avanzadas - Definir | 2010-10-04 | 2010-10-11 |  |
| 66 | **Handicaps** | 2010-10-11 | 2010-10-14 | 64 |
| 67 | Uso de handicaps | 2010-10-11 | 2010-10-14 |  |
| 68 | **Courses** | 2010-10-14 | 2010-11-01 | 66 |
| 69 | Alta por parte de Usuarios | 2010-10-14 | 2010-10-21 |  |
| 70 | Alta por batch | 2010-10-21 | 2010-10-25 | 69 |
| 71 | Valoración con estrellas | 2010-10-25 | 2010-10-27 | 70 |
| 72 | Comentarios - ¿Foro? | 2010-10-27 | 2010-11-01 | 71 |
| 73 | **Matches** | 2010-11-01 | 2010-11-04 | 68 |
| 74 | Comentarios - ¿Foro? | 2010-11-01 | 2010-11-04 |  |
| 75 | **Desarrollo móvil** | 2010-06-07 | 2010-06-09 |  |
| 76 | Análisis Funcional | 2010-06-07 | 2010-06-07 |  |
| 77 | Desarrollo IPhone | 2010-06-08 | 2010-06-08 | 76 |
| 78 | Desarrollo Android | 2010-06-09 | 2010-06-09 | 77 |

Changed:

| ID | Task | Start | Finish | Complete | Predecessors |
| --- | --- | --- | --- | --- | --- |
| 1 | **mygolfcard** |  | 2010-08-04 → 2010-11-04 (+92d) |  |  |
| 7 | **Alcance versión I** |  | 2010-08-04 → 2010-08-24 (+20d) | 0% → 65% |  |
| 9 | **Seguridad v.1.0** |  |  | 0% → 95% |  |
| 12 | **Courses** |  |  | 0% → 85% |  |
| 16 | Campos de Madrid |  |  | 0% → 15% |  |
| 17 | **Revisión CRUD Courses** |  |  | 0% → 100% |  |
| 18 | **Revisión de estilo - FF/IE/OP** |  |  | 0% → 100% |  |
| 24 | **Matches** |  | 2010-07-08 → 2010-07-09 (+1d) | 0% → 80% |  |
| 28 | Privacidad en visualización |  |  | 0% → 100% |  |
| 30 | **Home** | 2010-07-08 → 2010-07-09 (+1d) | 2010-07-13 → 2010-07-14 (+1d) | 0% → 100% |  |
| 31 | Revisión de textos | 2010-07-08 → 2010-07-09 (+1d) | 2010-07-09 → 2010-07-12 (+3d) | 0% → 100% |  |
| 32 | Alta nuevos usuarios | 2010-07-09 → 2010-07-12 (+3d) | 2010-07-13 → 2010-07-14 (+1d) | 0% → 100% |  |
| 33 | **Inicio** | 2010-07-13 → 2010-07-14 (+1d) | 2010-07-16 → 2010-07-19 (+3d) | 0% → 80% |  |
| 34 | Estilos | 2010-07-13 → 2010-07-14 (+1d) | 2010-07-14 → 2010-07-15 (+1d) | 0% → 100% |  |
| 35 | Revisión textos de ayuda | 2010-07-14 → 2010-07-15 (+1d) | 2010-07-15 → 2010-07-16 (+1d) | 0% → 100% |  |
| 36 | Definir opciones finales | 2010-07-15 → 2010-07-16 (+1d) | 2010-07-16 → 2010-07-19 (+3d) | 0% → 50% |  |
| 37 | Menú | 2010-07-16 → 2010-07-19 (+3d) | 2010-07-19 → 2010-07-20 (+1d) | 0% → 50% |  |
| 38 | **Datos Personales** | 2010-07-19 → 2010-07-20 (+1d) | 2010-07-23 → 2010-07-26 (+3d) | 0% → 50% |  |
| 39 | Modificación Datos | 2010-07-19 → 2010-07-20 (+1d) | 2010-07-20 → 2010-07-21 (+1d) | 0% → 100% |  |
| 40 | Recuperación password | 2010-07-20 → 2010-07-21 (+1d) | 2010-07-21 → 2010-07-22 (+1d) |  |  |
| 41 | Cambio Password | 2010-07-21 → 2010-07-22 (+1d) | 2010-07-22 → 2010-07-23 (+1d) |  |  |
| 42 | Amigos | 2010-07-22 → 2010-07-23 (+1d) | 2010-07-23 → 2010-07-26 (+3d) | 0% → 100% |  |
| 43 | **Stats** | 2010-07-23 → 2010-07-26 (+3d) | 2010-07-30 → 2010-08-05 (+6d) |  |  |
| 44 | Definir 2-3 básicas | 2010-07-23 → 2010-07-26 (+3d) | 2010-07-27 → 2010-08-02 (+6d) |  |  |
| 45 | Estilos | 2010-07-27 → 2010-08-02 (+6d) | 2010-07-30 → 2010-08-05 (+6d) |  |  |
| 46 | **Revisión final** | 2010-07-30 → 2010-08-05 (+6d) | 2010-08-04 → 2010-08-24 (+20d) |  |  |
| 47 | Revisión CRUD Matches | 2010-07-30 → 2010-08-05 (+6d) | 2010-08-04 → 2010-08-06 (+2d) |  |  |
| 48 | Revisión modelo de datos | 2010-07-30 → 2010-08-06 (+7d) | 2010-08-04 → 2010-08-10 (+6d) |  | none → 47 |
| 49 | Revisión formularios (obligatorios) | 2010-07-30 → 2010-08-10 (+11d) | 2010-08-04 → 2010-08-12 (+8d) |  | none → 48 |
| 50 | Revisión presentación tarjeta | 2010-07-30 → 2010-08-12 (+13d) | 2010-08-04 → 2010-08-13 (+9d) |  | none → 49 |
| 51 | Revisión Estadísticas | 2010-07-30 → 2010-08-13 (+14d) | 2010-08-04 → 2010-08-18 (+14d) |  | none → 50 |

## Version 11 (saved 2010-07-26)

Note of the change: checking matches features

Last finish 2010-11-04 → 2010-11-23 (+19d).

Added:

| ID | Task | Start | Finish | Predecessors |
| --- | --- | --- | --- | --- |
| 75 | **Sección de Links de interés** | 2010-11-04 | 2010-11-09 | 73 |
| 76 | Link a páginas externas | 2010-11-04 | 2010-11-09 |  |
| 77 | Internacionalización - Inglés | 2010-11-09 | 2010-11-23 | 75 |

Changed:

| ID | Task | Finish |
| --- | --- | --- |
| 1 | **mygolfcard** | 2010-11-04 → 2010-11-23 (+19d) |
| 57 | **Alcance versión II** | 2010-11-04 → 2010-11-23 (+19d) |

## Version 12 (saved 2010-07-28)

Note of the change: fixing error with matches view & filter

Last finish stays 2010-11-23. Complete tasks 23 → 26.

Added:

| ID | Task | Start | Finish |
| --- | --- | --- | --- |
| 78 | Rediseñar Menú | 2010-09-21 | 2010-09-24 |

Changed:

| ID | Task | Complete |
| --- | --- | --- |
| 7 | **Alcance versión I** | 65% → 75% |
| 24 | **Matches** | 80% → 100% |
| 29 | Trasladar el handicap del usuario al partido | 0% → 100% |
| 37 | Menú | 50% → 100% |
| 38 | **Datos Personales** | 50% → 75% |
| 41 | Cambio Password | 0% → 100% |
| 43 | **Stats** | 0% → 20% |
| 45 | Estilos | 0% → 40% |

## Version 13 (saved 2010-08-16)

Note of the change: fixing bug in production server with json response in holes controller

Last finish stays 2010-11-23. Complete tasks 26 → 30.

Changed:

| ID | Task | Complete |
| --- | --- | --- |
| 33 | **Inicio** | 80% → 100% |
| 36 | Definir opciones finales | 50% → 100% |
| 38 | **Datos Personales** | 75% → 100% |
| 40 | Recuperación password | 0% → 100% |
| 43 | **Stats** | 20% → 100% |
| 44 | Definir 2-3 básicas | 0% → 100% |
| 45 | Estilos | 40% → 100% |

## Version 14 (saved 2010-08-23)

Note of the change: Merge branch 'dev'

Last finish stays 2010-11-23. Complete tasks 30 → 31.

Changed:

| ID | Task | Complete |
| --- | --- | --- |
| 50 | Revisión presentación tarjeta | 0% → 100% |
